# Veazy_Project Schedule_v1.2_EN

Schedule from MS Project, 2016-05-09 to 2016-08-26.
Veazy_Project Schedule_v1.2_EN
FPT

## Calendars

- Standard: Mon-Fri 08:00-12:00, 13:00-17:00; Sat-Sun off.

## Resources

| Resource |
| --- |
| MinhNN |
| TungDT |
| ThangPD |
| DuyNT |
| QuanNH |
| LinhNH |
| TEAM |
| DevTeam |
| DocTeam |
| TestTeam |
| FrontendTeam |
| BackendTeam |

## Schedule

| ID | WBS | Task | Type | Duration | Start | Finish | Predecessors | Total slack | Free slack | Constraint | Resources | Work |
| --- | --- | --- | --- | --- | --- | --- | --- | --- | --- | --- | --- | --- |
| 1 | 1 | **Veazy** |  | 80d | 2016-05-09 08:00 | 2016-08-26 17:00 |  |  |  |  |  | 1380h |
| 2 | 1.1 | **Initiation** |  | 12.5d | 2016-05-09 08:00 | 2016-05-25 12:00 |  | 1d | 0d |  |  | 220h |
| 3 | 1.1.1 | **Form up** |  | 0.5d | 2016-05-09 08:00 | 2016-05-09 12:00 |  | 1.5d |  |  |  | 4h |
| 4 | 1.1.1.1 | Form up team roles |  | 0.25d | 2016-05-09 08:00 | 2016-05-09 10:00 |  | 1.5d | 0d | start no earlier than 2016-05-09 08:00 | TEAM | 2h |
| 5 | 1.1.1.2 | Uniform idea meeting |  | 0.25d | 2016-05-09 10:00 | 2016-05-09 12:00 | 4 | 1.5d | 0d |  | TEAM | 2h |
| 6 | 1.1.2 | **Project Clarification** |  | 1d | 2016-05-09 13:00 | 2016-05-10 12:00 |  | 1.5d | 0d |  |  | 12h |
| 7 | 1.1.2.1 | Clarify project scope |  | 0.1d | 2016-05-09 13:00 | 2016-05-09 13:48 | 5 | 1.5d | 0d |  | TEAM | 0.8h |
| 8 | 1.1.2.2 | Clarify technical requirements |  | 0.1d | 2016-05-09 13:48 | 2016-05-09 14:36 | 7 | 1.5d | 0d |  | TEAM | 0.8h |
| 9 | 1.1.2.3 | Clarify rules in Team |  | 0.1d | 2016-05-09 14:36 | 2016-05-09 15:24 | 8 | 1.5d | 0d |  | TEAM | 0.8h |
| 10 | 1.1.2.4 | Clarify working environments |  | 0.1d | 2016-05-09 15:24 | 2016-05-09 16:12 | 9 | 1.5d | 0d |  | TEAM | 0.8h |
| 11 | 1.1.2.5 | Develop communications plan |  | 0.1d | 2016-05-09 16:12 | 2016-05-09 17:00 | 10 | 1.5d | 0d |  | MinhNN | 0.8h |
| 12 | 1.1.2.6 | List project features |  | 0.5d | 2016-05-10 08:00 | 2016-05-10 12:00 | 11 | 1.5d | 0d | start no earlier than 2016-05-10 08:00 | TEAM | 4h |
| 13 | 1.1.2.7 | Initiate Project structure |  | 0.5d | 2016-05-10 08:00 | 2016-05-10 12:00 | 11 | 1.5d |  |  | MinhNN | 4h |
| 14 | 1.1.3 | **Environment** |  | 1d | 2016-05-10 13:00 | 2016-05-11 12:00 | 6 | 2d | 0d |  |  | 8h |
| 15 | 1.1.3.1 | Create guideline of installing and using environments |  | 2h | 2016-05-10 13:00 | 2016-05-10 15:00 | 12 | 1.5d | 0d |  | MinhNN | 2h |
| 16 | 1.1.3.2 | Setup Git Bash |  | 0.5h | 2016-05-10 15:00 | 2016-05-10 15:30 | 15 | 1.5d | 0d |  | TEAM | 0.5h |
| 17 | 1.1.3.3 | Setup Eclipse & Plugin |  | 2h | 2016-05-10 15:30 | 2016-05-11 08:30 | 16 | 1.5d | 0d |  | TEAM | 2h |
| 18 | 1.1.3.4 | Setup Postgresql Server |  | 1.5h | 2016-05-11 08:30 | 2016-05-11 10:00 | 17 | 1.5d | 0d |  | TEAM | 1.5h |
| 19 | 1.1.3.5 | Training environments meeting |  | 2h | 2016-05-11 10:00 | 2016-05-11 12:00 | 18 | 1.5d |  |  | TEAM | 2h |
| 20 | 1.1.4 | **Technology research** |  | 3d | 2016-05-11 13:00 | 2016-05-16 12:00 | 14 | 8d |  |  |  | 48h |
| 21 | 1.1.4.1 | Research technologies to be used in project |  | 1d | 2016-05-11 13:00 | 2016-05-12 12:00 |  | 3.5d | 0d |  | DuyNT; MinhNN | 16h |
| 22 | 1.1.4.2 | Study SpringMVC & Hibernate |  | 2d | 2016-05-12 13:00 | 2016-05-16 12:00 | 21 | 3.5d |  |  | BackendTeam | 16h |
| 23 | 1.1.4.3 | Study AngularJS, jQuery, Bootstrap |  | 2d | 2016-05-12 13:00 | 2016-05-16 12:00 | 21 | 3.5d |  | start no earlier than 2016-05-12 08:00 | FrontendTeam | 16h |
| 24 | 1.1.5 | **Project Introduction** |  | 4d | 2016-05-12 08:00 | 2016-05-17 17:00 | 14 | 1.5d | 0d |  |  | 32h |
| 25 | 1.1.5.1 | Create "Project Introduction" document |  | 2d | 2016-05-12 08:00 | 2016-05-13 17:00 |  | 1.5d | 0d | finish no earlier than 2016-05-13 17:00 | DocTeam | 16h |
| 26 | 1.1.5.2 | Review "Project Introduction" document |  | 0.5d | 2016-05-16 08:00 | 2016-05-16 12:00 | 25 | 1d | 0d |  | MinhNN | 4h |
| 27 | 1.1.5.3 | Update "Project Introduction" document draft |  | 0.5d | 2016-05-16 13:00 | 2016-05-16 17:00 | 26 | 1d | 0d |  | DocTeam | 4h |
| 28 | 1.1.5.4 | Update "Project Introduction" based on instructor's comments |  | 1d | 2016-05-17 08:00 | 2016-05-17 17:00 | 27 | 1d | 0d |  | DocTeam | 8h |
| 29 | 1.1.5.5 | Summit Project Introduction | milestone | 0d | 2016-05-17 17:00 | 2016-05-17 17:00 | 28 | 1d |  |  |  |  |

| ID | WBS | Task | Type | Duration | Start | Finish | Predecessors | Total slack | Free slack | Constraint | Resources | Work |
| --- | --- | --- | --- | --- | --- | --- | --- | --- | --- | --- | --- | --- |
| 30 | 1.1.6 | **Project Plan** |  | 5.5d | 2016-05-11 13:00 | 2016-05-18 17:00 | 14 | 5.5d |  |  |  | 60h |
| 31 | 1.1.6.1 | Develop project definition |  | 0.5d | 2016-05-11 13:00 | 2016-05-11 17:00 | 14 | 6d |  |  | LinhNH; TungDT | 8h |
| 32 | 1.1.6.2 | Create CM Plan document |  | 0.5d | 2016-05-11 13:00 | 2016-05-11 17:00 | 14 | 6d |  |  | QuanNH | 4h |
| 33 | 1.1.6.3 | Develop Risk Register |  | 0.5d | 2016-05-11 13:00 | 2016-05-11 17:00 | 14 | 6d |  |  | TungDT | 4h |
| 34 | 1.1.6.4 | Create Project plan document |  | 2d | 2016-05-11 13:00 | 2016-05-13 12:00 | 14 | 5.5d | 0d |  | MinhNN | 16h |
| 35 | 1.1.6.5 | Create Work BreakDown Structure |  | 0.5d | 2016-05-13 13:00 | 2016-05-13 17:00 | 34 | 5.5d | 0d |  | MinhNN | 4h |
| 36 | 1.1.6.6 | Create Project schedule document |  | 2d | 2016-05-16 08:00 | 2016-05-17 17:00 | 35 | 5.5d | 0d |  | MinhNN | 16h |
| 37 | 1.1.6.7 | Review & get comment of Project Plan |  | 0.5d | 2016-05-18 08:00 | 2016-05-18 12:00 | 36 | 5.5d | 0d |  | MinhNN | 4h |
| 38 | 1.1.6.8 | Update Project Plan documents (Schedule, Project Plan in MS Word, CM Plan) |  | 0.5d | 2016-05-18 13:00 | 2016-05-18 17:00 | 37 | 5.5d | 0d |  | MinhNN | 4h |
| 39 | 1.1.6.9 | Summit Project Plan Final version | milestone | 0d | 2016-05-18 17:00 | 2016-05-18 17:00 | 38 | 5.5d |  |  |  |  |
| 40 | 1.1.7 | Kick-off meeting |  | 0.5d | 2016-05-18 08:00 | 2016-05-18 12:00 | 24 | 6d | 0d |  | TEAM | 4h |
| 41 | 1.1.8 | **Q&A sheet** |  | 1d | 2016-05-18 13:00 | 2016-05-19 12:00 | 24 | 5d |  |  |  | 12h |
| 42 | 1.1.8.1 | Create Q&A |  | 0.5d | 2016-05-18 13:00 | 2016-05-18 17:00 | 40 | 0.5d | 0d |  | QuanNH | 4h |
| 43 | 1.1.8.2 | Update Q&A sheet |  | 0.5d | 2016-05-19 08:00 | 2016-05-19 12:00 | 42 | 0.5d |  |  | QuanNH | 4h |
| 44 | 1.1.8.3 | Translate Q&A sheet |  | 0.5d | 2016-05-19 08:00 | 2016-05-19 12:00 | 42 | 0.5d |  |  | DuyNT | 4h |
| 45 | 1.1.9 | **Requirement** |  | 5d | 2016-05-18 08:00 | 2016-05-24 17:00 | 24 | 1d | 0d |  |  | 36h |
| 46 | 1.1.9.1 | **User Requirement** |  | 2.5d | 2016-05-18 08:00 | 2016-05-20 12:00 |  | 1d | 0d |  |  | 16h |
| 47 | 1.1.9.1.1 | Develop brief "User Requirements Specification" document |  | 1d | 2016-05-18 08:00 | 2016-05-18 17:00 |  | 1d | 0d |  | DocTeam | 8h |
| 48 | 1.1.9.1.2 | Peer review brief "User Requirements Specification" document |  | 0.5d | 2016-05-19 08:00 | 2016-05-19 12:00 | 47 | 1d | 0.5d |  | DocTeam | 4h |
| 49 | 1.1.9.1.3 | Update brief "User Requirements Specification" document |  | 0.5d | 2016-05-20 08:00 | 2016-05-20 12:00 | 48 | 0.5d |  | start no earlier than 2016-05-20 08:00 | DocTeam | 4h |
| 50 | 1.1.9.2 | **Mock-up screens** |  | 2.5d | 2016-05-20 13:00 | 2016-05-24 17:00 | 46 | 1d |  |  |  | 20h |
| 51 | 1.1.9.2.1 | Collect business requirements and processes |  | 0.5d | 2016-05-20 13:00 | 2016-05-20 17:00 |  | 0.5d | 0d |  | TEAM | 4h |
| 52 | 1.1.9.2.2 | Develop main features' mockup screens |  | 1.5d | 2016-05-23 08:00 | 2016-05-24 12:00 | 51 | 0.5d | 0d |  | DevTeam | 12h |
| 53 | 1.1.9.2.3 | Review and edit screen main features' mockup screens |  | 0.5d | 2016-05-24 13:00 | 2016-05-24 17:00 | 52 | 0.5d | 0d |  | DevTeam | 4h |
| 54 | 1.1.9.3 | Complete main features' mockup screens | milestone | 0d | 2016-05-24 17:00 | 2016-05-24 17:00 | 53 | 2d |  |  |  |  |
| 55 | 1.1.10 | Phase meeting |  | 0.5d | 2016-05-25 08:00 | 2016-05-25 12:00 | 45 | 2d |  | start no earlier than 2016-05-25 08:00 | TEAM | 4h |

| ID | WBS | Task | Type | Duration | Start | Finish | Predecessors | Total slack | Free slack | Resources | Work |
| --- | --- | --- | --- | --- | --- | --- | --- | --- | --- | --- | --- |
| 56 | 1.2 | **Solution** |  | 20.5d | 2016-05-25 13:00 | 2016-06-22 17:00 | 2 | 1d | 0d |  | 280h |
| 57 | 1.2.1 | **Sofware Requirement Specification** |  | 20d | 2016-05-25 13:00 | 2016-06-22 12:00 |  | 1d | 0d |  | 120h |
| 58 | 1.2.1.1 | **Functional Requirement Specification** |  | 19d | 2016-05-25 13:00 | 2016-06-21 12:00 |  | 1d |  |  | 104h |
| 59 | 1.2.1.1.1 | **Core Module** |  | 12d | 2016-05-25 13:00 | 2016-06-10 12:00 |  | 1d | 0d |  | 96h |
| 60 | 1.2.1.1.1.1 | Authentication module |  | 1d | 2016-05-25 13:00 | 2016-05-26 12:00 |  | 2d | 0d | DocTeam | 8h |
| 61 | 1.2.1.1.1.2 | Account Management module |  | 2d | 2016-05-26 13:00 | 2016-05-30 12:00 | 60 | 2d | 0d | DocTeam | 16h |
| 62 | 1.2.1.1.1.3 | Learning module |  | 4d | 2016-05-30 13:00 | 2016-06-03 12:00 | 61 | 2d | 0d | DocTeam | 32h |
| 63 | 1.2.1.1.1.4 | Question Bank module |  | 2d | 2016-06-03 13:00 | 2016-06-07 12:00 | 62 | 2d | 0d | DocTeam | 16h |
| 64 | 1.2.1.1.1.5 | Examination module |  | 2d | 2016-06-07 13:00 | 2016-06-09 12:00 | 63 | 2d | 0d | DocTeam | 16h |
| 65 | 1.2.1.1.1.6 | Content Reporting module |  | 0.5d | 2016-06-09 13:00 | 2016-06-09 17:00 | 64 | 2d | 0d | DocTeam | 4h |
| 66 | 1.2.1.1.1.7 | Statistic module |  | 0.5d | 2016-06-10 08:00 | 2016-06-10 12:00 | 65 | 2d |  | DocTeam | 4h |
| 67 | 1.2.1.1.2 | **Dictionary Module** |  | 1d | 2016-06-20 13:00 | 2016-06-21 12:00 | 59FS+6d | 1d | 0d |  | 8h |
| 68 | 1.2.1.1.2.1 | Word Looking Up module |  | 1d | 2016-06-20 13:00 | 2016-06-21 12:00 | 66 | 2d |  | DocTeam | 8h |
| 69 | 1.2.1.2 | **Non-functional Requirements Specification** |  | 1d | 2016-06-21 13:00 | 2016-06-22 12:00 | 67 | 1d |  |  | 16h |
| 70 | 1.2.1.2.1 | Develop User Interface requirements |  | 1d | 2016-06-21 13:00 | 2016-06-22 12:00 |  | 2d |  | DocTeam | 8h |
| 71 | 1.2.1.2.2 | Develop Performance requirements |  | 1d | 2016-06-21 13:00 | 2016-06-22 12:00 |  | 2d |  | DocTeam | 8h |
| 72 | 1.2.2 | **System Architectural Design** |  | 2d | 2016-05-25 13:00 | 2016-05-27 12:00 | 2 | 14d | 0d |  | 16h |
| 73 | 1.2.2.1 | Define the system structure and unify system features |  | 1d | 2016-05-25 13:00 | 2016-05-26 12:00 |  | 15d | 0d | DevTeam | 8h |
| 74 | 1.2.2.2 | Study the common System Architetures |  | 0.5d | 2016-05-26 13:00 | 2016-05-26 17:00 | 73 | 15d | 0d | DevTeam | 4h |
| 75 | 1.2.2.3 | Make choice of System Architeture |  | 0.5d | 2016-05-27 08:00 | 2016-05-27 12:00 | 74 | 15d | 0d | DevTeam | 4h |
| 76 | 1.2.2.4 | Complete Architecture Design version 1.0 | milestone | 0d | 2016-05-27 12:00 | 2016-05-27 12:00 | 75 | 15d |  |  |  |
| 77 | 1.2.3 | **Detailed Design** |  | 5.5d | 2016-05-27 13:00 | 2016-06-03 17:00 | 72 | 14d |  |  | 92h |
| 78 | 1.2.3.1 | **Database design** |  | 2d | 2016-05-27 13:00 | 2016-05-31 12:00 |  | 17.5d |  |  | 16h |
| 79 | 1.2.3.1.1 | Organize information to Database tables |  | 0.5d | 2016-05-27 13:00 | 2016-05-27 17:00 |  | 18.5d | 0d | BackendTeam | 4h |
| 80 | 1.2.3.1.2 | Define object in Database |  | 0.5d | 2016-05-30 08:00 | 2016-05-30 12:00 | 79 | 18.5d | 0d | BackendTeam | 4h |
| 81 | 1.2.3.1.3 | Define relationships in Database |  | 0.5d | 2016-05-30 13:00 | 2016-05-30 17:00 | 80 | 18.5d | 0d | BackendTeam | 4h |
| 82 | 1.2.3.1.4 | Refine Database design |  | 0.5d | 2016-05-31 08:00 | 2016-05-31 12:00 | 81 | 18.5d |  | BackendTeam | 4h |

Notes:
- 67: Summer Vacation

| ID | WBS | Task | Type | Duration | Start | Finish | Predecessors | Total slack | Free slack | Constraint | Resources | Work |
| --- | --- | --- | --- | --- | --- | --- | --- | --- | --- | --- | --- | --- |
| 83 | 1.2.3.2 | **Screen design** |  | 4d | 2016-05-27 13:00 | 2016-06-02 12:00 |  | 15.5d |  |  |  | 32h |
| 84 | 1.2.3.2.1 | Create Screen Flow digram |  | 1d | 2016-05-27 13:00 | 2016-05-30 12:00 | 72 | 16.5d | 0d | start no earlier than 2016-05-27 08:00 | FrontendTeam | 8h |
| 85 | 1.2.3.2.2 | Create Screen Definition |  | 1d | 2016-05-30 13:00 | 2016-05-31 12:00 | 84 | 16.5d | 0d |  | FrontendTeam | 8h |
| 86 | 1.2.3.2.3 | Create Screen Design |  | 2d | 2016-05-31 13:00 | 2016-06-02 12:00 | 85 | 16.5d |  |  | FrontendTeam | 16h |
| 87 | 1.2.3.3 | **Class/Component Design** |  | 4.5d | 2016-05-27 13:00 | 2016-06-02 17:00 |  | 14d |  |  |  | 36h |
| 88 | 1.2.3.3.1 | List components of the system |  | 0.5d | 2016-05-27 13:00 | 2016-05-27 17:00 |  | 15d | 0d |  | DevTeam | 4h |
| 89 | 1.2.3.3.2 | Create architecture design |  | 2d | 2016-05-30 08:00 | 2016-05-31 17:00 | 88 | 15d | 0d |  | DevTeam | 16h |
| 90 | 1.2.3.3.3 | Create class diagram |  | 2d | 2016-06-01 08:00 | 2016-06-02 17:00 | 89 | 15d | 0d |  | DevTeam | 16h |
| 91 | 1.2.3.4 | Create review checklists |  | 1d | 2016-06-03 08:00 | 2016-06-03 17:00 | 90 | 15d |  |  | DevTeam | 8h |
| 92 | 1.2.4 | **Project Management** |  | 2d | 2016-05-27 13:00 | 2016-05-31 12:00 | 72 | 17.5d |  |  |  | 16h |
| 93 | 1.2.4.1 | Update project plan |  | 2d | 2016-05-27 13:00 | 2016-05-31 12:00 |  | 18.5d |  |  | MinhNN | 16h |
| 94 | 1.2.5 | **Test** |  | 3.5d | 2016-05-25 13:00 | 2016-05-30 17:00 |  | 18d | 17d |  |  | 32h |
| 95 | 1.2.5.1 | Create Test plan |  | 1d | 2016-05-25 13:00 | 2016-05-26 12:00 |  | 19.5d | 0d |  | DuyNT | 8h |
| 96 | 1.2.5.2 | Review + Update Test plan |  | 1d | 2016-05-26 13:00 | 2016-05-27 12:00 | 95 | 19.5d | 0d |  | MinhNN | 8h |
| 97 | 1.2.5.3 | Test plan approved | milestone | 0d | 2016-05-27 12:00 | 2016-05-27 12:00 | 96 | 19.5d |  |  |  |  |
| 98 | 1.2.5.4 | Create test cases |  | 2d | 2016-05-27 08:00 | 2016-05-30 17:00 |  | 18d |  | start no earlier than 2016-05-27 08:00 | DocTeam | 16h |
| 99 | 1.2.6 | Phase meeting |  | 0.5d | 2016-06-22 13:00 | 2016-06-22 17:00 | 57 | 2d |  |  | TEAM | 4h |
| 100 | 1.3 | **Construction** |  | 41d | 2016-06-23 08:00 | 2016-08-18 17:00 | 56 | 1d | 0d |  |  | 840h |
| 101 | 1.3.1 | **Design** |  | 2d | 2016-06-23 08:00 | 2016-06-24 17:00 |  | 1d | 0d |  |  | 16h |
| 102 | 1.3.1.1 | Refine Design document |  | 2d | 2016-06-23 08:00 | 2016-06-24 17:00 |  | 1d |  |  | DevTeam | 16h |
| 103 | 1.3.2 | **Coding** |  | 31d | 2016-06-27 08:00 | 2016-08-08 17:00 | 101 | 1d | 0d |  |  | 464h |
| 104 | 1.3.2.1 | Build prototype |  | 2d | 2016-06-27 08:00 | 2016-06-28 17:00 |  | 1d | 0d |  | DevTeam | 16h |
| 105 | 1.3.2.2 | Prototype approved | milestone | 0d | 2016-06-28 17:00 | 2016-06-28 17:00 | 104 | 2d | 0d |  |  |  |
| 106 | 1.3.2.3 | **Coding product** |  | 29d | 2016-06-29 08:00 | 2016-08-08 17:00 | 105 | 1d | 0d |  |  | 448h |
| 107 | 1.3.2.3.1 | **Coding Fronent Modules** |  | 28d | 2016-06-29 08:00 | 2016-08-05 17:00 |  | 2d |  |  |  | 224h |
| 108 | 1.3.2.3.1.1 | **Core Module** |  | 26d | 2016-06-29 08:00 | 2016-08-03 17:00 |  | 2d |  |  |  | 208h |
| 109 | 1.3.2.3.1.1.1 | Common module |  | 2d | 2016-06-29 08:00 | 2016-06-30 17:00 |  | 2d | 0d |  | FrontendTeam | 16h |
| 110 | 1.3.2.3.1.1.2 | Authentication module |  | 1d | 2016-07-01 08:00 | 2016-07-01 17:00 | 109 | 2d | 0d |  | FrontendTeam | 8h |
| 111 | 1.3.2.3.1.1.3 | Account Management module |  | 4d | 2016-07-04 08:00 | 2016-07-07 17:00 | 110 | 2d | 0d |  | FrontendTeam | 32h |
| 112 | 1.3.2.3.1.1.4 | Learning module |  | 8d | 2016-07-08 08:00 | 2016-07-19 17:00 | 111 | 2d | 0d |  | FrontendTeam | 64h |
| 113 | 1.3.2.3.1.1.5 | Question Bank module |  | 4d | 2016-07-20 08:00 | 2016-07-25 17:00 | 112 | 2d | 0d |  | FrontendTeam | 32h |
| 114 | 1.3.2.3.1.1.6 | Examination module |  | 4d | 2016-07-26 08:00 | 2016-07-29 17:00 | 113 | 2d | 0d |  | FrontendTeam | 32h |
| 115 | 1.3.2.3.1.1.7 | Content Reporting module |  | 1d | 2016-08-01 08:00 | 2016-08-01 17:00 | 114 | 2d | 0d |  | FrontendTeam | 8h |
| 116 | 1.3.2.3.1.1.8 | Statistic module |  | 2d | 2016-08-02 08:00 | 2016-08-03 17:00 | 115 | 2d | 0d |  | FrontendTeam | 16h |

| ID | WBS | Task | Type | Duration | Start | Finish | Predecessors | Total slack | Free slack | Resources | Work |
| --- | --- | --- | --- | --- | --- | --- | --- | --- | --- | --- | --- |
| 117 | 1.3.2.3.1.2 | **Dictionary Module** |  | 2d | 2016-08-04 08:00 | 2016-08-05 17:00 |  | 2d |  |  | 16h |
| 118 | 1.3.2.3.1.2.1 | Word Looking Up module |  | 2d | 2016-08-04 08:00 | 2016-08-05 17:00 | 116 | 2d |  | FrontendTeam | 16h |
| 119 | 1.3.2.3.2 | **Coding Backend Modules** |  | 28d | 2016-06-30 08:00 | 2016-08-08 17:00 | 105FS+1d | 1d |  |  | 224h |
| 120 | 1.3.2.3.2.1 | **Core Module** |  | 24d | 2016-06-30 08:00 | 2016-08-02 17:00 |  | 1d |  |  | 192h |
| 121 | 1.3.2.3.2.1.1 | Model Component |  | 2d | 2016-06-30 08:00 | 2016-07-01 17:00 |  | 1d | 0d | BackendTeam | 16h |
| 122 | 1.3.2.3.2.1.2 | DAO Component |  | 4d | 2016-07-04 08:00 | 2016-07-07 17:00 | 121 | 1d | 0d | BackendTeam | 32h |
| 123 | 1.3.2.3.2.1.3 | Service Component |  | 8d | 2016-07-08 08:00 | 2016-07-19 17:00 | 122 | 1d | 0d | BackendTeam | 64h |
| 124 | 1.3.2.3.2.1.4 | Controller Component |  | 8d | 2016-07-20 08:00 | 2016-07-29 17:00 | 123 | 1d | 0d | BackendTeam | 64h |
| 125 | 1.3.2.3.2.1.5 | Integrate components |  | 2d | 2016-08-01 08:00 | 2016-08-02 17:00 | 124 | 1d | 0d | BackendTeam | 16h |
| 126 | 1.3.2.3.2.2 | **Dictionary Module** |  | 4d | 2016-08-03 08:00 | 2016-08-08 17:00 |  | 1d |  |  | 32h |
| 127 | 1.3.2.3.2.2.1 | Model Component |  | 0.5d | 2016-08-03 08:00 | 2016-08-03 12:00 | 125 | 1d | 0d | BackendTeam | 4h |
| 128 | 1.3.2.3.2.2.2 | DAO Component |  | 0.5d | 2016-08-03 13:00 | 2016-08-03 17:00 | 127 | 1d | 0d | BackendTeam | 4h |
| 129 | 1.3.2.3.2.2.3 | Service Component |  | 1d | 2016-08-04 08:00 | 2016-08-04 17:00 | 128 | 1d | 0d | BackendTeam | 8h |
| 130 | 1.3.2.3.2.2.4 | Controller Component |  | 1d | 2016-08-05 08:00 | 2016-08-05 17:00 | 129 | 1d | 0d | BackendTeam | 8h |
| 131 | 1.3.2.3.2.2.5 | Integrate components |  | 1d | 2016-08-08 08:00 | 2016-08-08 17:00 | 130 | 1d |  | BackendTeam | 8h |
| 132 | 1.3.2.4 | Product development completes | milestone | 0d | 2016-08-08 17:00 | 2016-08-08 17:00 | 106 | 6d |  |  |  |
| 133 | 1.3.3 | **Testing** |  | 40d | 2016-06-23 08:00 | 2016-08-17 17:00 | 94 | 1d | 0d |  | 168h |
| 134 | 1.3.3.1 | **Writing Test cases (Continue)** |  | 8d | 2016-06-23 08:00 | 2016-07-04 17:00 |  | 33d | 0d |  | 64h |
| 135 | 1.3.3.1.1 | Create Integration Test Case |  | 2d | 2016-06-23 08:00 | 2016-06-24 17:00 |  | 33d | 0d | TestTeam | 16h |
| 136 | 1.3.3.1.2 | Update and review Integration Test Case |  | 2d | 2016-06-27 08:00 | 2016-06-28 17:00 | 135 | 33d | 0d | DevTeam | 16h |
| 137 | 1.3.3.1.3 | Create System Test Case |  | 2d | 2016-06-29 08:00 | 2016-06-30 17:00 | 136 | 33d | 0d | TestTeam | 16h |
| 138 | 1.3.3.1.4 | Update and review System Test Case |  | 2d | 2016-07-01 08:00 | 2016-07-04 17:00 | 137 | 33d |  | DevTeam | 16h |
| 139 | 1.3.3.2 | Writing Test cases completes | milestone | 0d | 2016-07-04 17:00 | 2016-07-04 17:00 | 134 | 33d |  |  |  |
| 140 | 1.3.3.3 | **Execute Test** |  | 7d | 2016-08-09 08:00 | 2016-08-17 17:00 | 106 | 1d |  |  | 104h |
| 141 | 1.3.3.3.1 | **Execute Test Frontend** |  | 4d | 2016-08-09 08:00 | 2016-08-12 17:00 |  | 4d | 0d |  | 32h |
| 142 | 1.3.3.3.1.1 | Execute Integration Test |  | 2d | 2016-08-09 08:00 | 2016-08-10 17:00 |  | 4d | 0d | TestTeam | 16h |
| 143 | 1.3.3.3.1.2 | Fix bug Integration Test |  | 2d | 2016-08-11 08:00 | 2016-08-12 17:00 | 142 | 4d |  | DevTeam | 16h |

| ID | WBS | Task | Type | Duration | Start | Finish | Predecessors | Total slack | Free slack | Resources | Work |
| --- | --- | --- | --- | --- | --- | --- | --- | --- | --- | --- | --- |
| 144 | 1.3.3.3.2 | **Execute Test Backend** |  | 4d | 2016-08-09 08:00 | 2016-08-12 17:00 | 141SS | 1d |  |  | 32h |
| 145 | 1.3.3.3.2.1 | Execute Integration Test |  | 2d | 2016-08-09 08:00 | 2016-08-10 17:00 |  | 2d | 0d | TestTeam | 16h |
| 146 | 1.3.3.3.2.2 | Fix bug Integration Test |  | 2d | 2016-08-11 08:00 | 2016-08-12 17:00 | 145 | 4d |  | DevTeam | 16h |
| 147 | 1.3.3.3.3 | Execute System Test |  | 2d | 2016-08-11 08:00 | 2016-08-12 17:00 | 145 | 1d | 0d | TestTeam | 16h |
| 148 | 1.3.3.3.4 | Fix bug System Test |  | 2d | 2016-08-15 08:00 | 2016-08-16 17:00 | 147 | 1d | 0d | DevTeam | 16h |
| 149 | 1.3.3.3.5 | Create Test Report first verstion |  | 1d | 2016-08-17 08:00 | 2016-08-17 17:00 | 148 | 1d | 0d | DocTeam | 8h |
| 150 | 1.3.3.3.6 | Complete Testing | milestone | 0d | 2016-08-17 17:00 | 2016-08-17 17:00 | 149 | 2d |  |  |  |
| 151 | 1.3.4 | **User Manual** |  | 3d | 2016-08-09 08:00 | 2016-08-11 17:00 | 103 | 6d |  |  | 32h |
| 152 | 1.3.4.1 | Create Installation guideline |  | 1d | 2016-08-09 08:00 | 2016-08-09 17:00 |  | 6d | 0d | DocTeam | 8h |
| 153 | 1.3.4.2 | Create User guideline |  | 2d | 2016-08-09 08:00 | 2016-08-10 17:00 | 152SS | 6d | 0d | DocTeam | 16h |
| 154 | 1.3.4.3 | Review + Update guidelines |  | 1d | 2016-08-11 08:00 | 2016-08-11 17:00 | 153 | 6d |  | MinhNN | 8h |
| 155 | 1.3.5 | **Manage development** |  | 5d | 2016-06-27 08:00 | 2016-07-01 17:00 | 103SS | 35d |  |  | 160h |
| 156 | 1.3.5.1 | **Manage scope/cost/time** |  | 5d | 2016-06-27 08:00 | 2016-07-01 17:00 |  | 35d |  |  | 80h |
| 157 | 1.3.5.1.1 | Monitor product changes |  | 1w | 2016-06-27 08:00 | 2016-07-01 17:00 |  | 35d |  | MinhNN | 40h |
| 158 | 1.3.5.1.2 | Monitor project changes |  | 1w | 2016-06-27 08:00 | 2016-07-01 17:00 |  | 35d |  | MinhNN | 40h |
| 159 | 1.3.5.2 | **Manage communications** |  | 1d | 2016-06-27 08:00 | 2016-06-27 17:00 |  | 39d |  |  | 40h |
| 160 | 1.3.5.2.1 | **Implement communications methods and strategies** |  | 1d | 2016-06-27 08:00 | 2016-06-27 17:00 |  | 39d |  |  | 8h |
| 161 | 1.3.5.2.1.1 | Select tools |  | 1d | 2016-06-27 08:00 | 2016-06-27 17:00 |  | 39d |  | MinhNN | 8h |
| 162 | 1.3.5.2.2 | **Distribute information** |  | 1d | 2016-06-27 08:00 | 2016-06-27 17:00 |  | 39d |  |  | 24h |
| 163 | 1.3.5.2.2.1 | Attend team meeting |  | 1d | 2016-06-27 08:00 | 2016-06-27 17:00 |  | 39d |  | TEAM | 8h |
| 164 | 1.3.5.2.2.2 | Create status reports |  | 1d | 2016-06-27 08:00 | 2016-06-27 17:00 |  | 39d |  | QuanNH | 8h |
| 165 | 1.3.5.2.2.3 | Create Weekly Report |  | 1d | 2016-06-27 08:00 | 2016-06-27 17:00 |  | 39d |  | MinhNN | 8h |
| 166 | 1.3.5.2.3 | Resolve communications problems |  | 1d | 2016-06-27 08:00 | 2016-06-27 17:00 |  | 39d |  | MinhNN | 8h |
| 167 | 1.3.5.3 | **Manage quality control** |  | 1d | 2016-06-27 08:00 | 2016-06-27 17:00 |  | 39d |  |  | 16h |
| 168 | 1.3.5.3.1 | Monitor product quality |  | 1d | 2016-06-27 08:00 | 2016-06-27 17:00 |  | 39d |  | MinhNN | 8h |

| ID | WBS | Task | Duration | Start | Finish | Predecessors | Total slack | Free slack | Constraint | Resources | Work |
| --- | --- | --- | --- | --- | --- | --- | --- | --- | --- | --- | --- |
| 169 | 1.3.5.3.2 | **Monitor project quality** | 1d | 2016-06-27 08:00 | 2016-06-27 17:00 |  | 39d |  |  |  | 8h |
| 170 | 1.3.5.3.2.1 | Implement process improvements | 1d | 2016-06-27 08:00 | 2016-06-27 17:00 |  | 39d |  |  | MinhNN | 8h |
| 171 | 1.3.5.4 | **Manage risk** | 1d | 2016-06-27 08:00 | 2016-06-27 17:00 |  | 39d |  |  |  | 16h |
| 172 | 1.3.5.4.1 | Monitor risks | 1d | 2016-06-27 08:00 | 2016-06-27 17:00 |  | 39d |  |  | MinhNN | 8h |
| 173 | 1.3.5.4.2 | Specify responses | 1d | 2016-06-27 08:00 | 2016-06-27 17:00 |  | 39d |  |  | MinhNN | 8h |
| 174 | 1.3.5.5 | Manage integration | 1d | 2016-06-27 08:00 | 2016-06-27 17:00 |  | 39d |  |  | MinhNN | 8h |
| 175 | 1.3.6 | Phase meeting | 0.5d | 2016-08-18 08:00 | 2016-08-18 12:00 | 133 | 1d | 0d |  |  |  |
| 176 | 1.3.7 | Create final report + CD | 0.5d | 2016-08-18 13:00 | 2016-08-18 17:00 | 175 | 1d |  |  |  |  |
| 177 | 1.4 | **Termination** | 5d | 2016-08-19 08:00 | 2016-08-25 17:00 | 100 | 1d |  |  |  | 40h |
| 178 | 1.4.1 | **Pre-Closing** | 2d | 2016-08-19 08:00 | 2016-08-22 17:00 |  | 1d | 0d |  |  | 16h |
| 179 | 1.4.1.1 | Training presentation | 2d | 2016-08-19 08:00 | 2016-08-22 17:00 |  | 1d |  |  | TEAM | 16h |
| 180 | 1.4.2 | **Closing** | 3d | 2016-08-23 08:00 | 2016-08-25 17:00 | 178 | 1d |  |  |  | 24h |
| 181 | 1.4.2.1 | Prepare for presentation | 2d | 2016-08-23 08:00 | 2016-08-24 17:00 |  | 1d | 0d |  | TEAM | 16h |
| 182 | 1.4.2.2 | Represent Capstone Project and Completed | 1d | 2016-08-25 08:00 | 2016-08-25 17:00 | 181 | 1d |  | finish no earlier than 2015-08-26 17:00 | TEAM | 8h |
